Schedule from MS Project, 2021-03-01 to 2021-07-30, status date 2021-05-03, costs in ₽, A marks actual dates.
Команда разработчиков из 16 человек занимается созданием карты города на основе собственного модуля отображения. Проект должен быть завершен в течение 6 месяцев. Бюджет проекта: 50 000 рублей.

## Calendars

- Standard: Mon-Fri 08:00-12:00, 13:00-17:00; Sat-Sun off. Exceptions (off unless hours are given): 2021-03-08 (8 марта), 2021-05-03 (за 1 мая), 2021-05-10 (за 9 мая), 2021-06-14 (за 12 июня).

## Resources

| Resource | Group | Unit | Rate | Cost per use |
| --- | --- | --- | --- | --- |
| Ведущий программист | Программирование |  | 10 | 100 |
| Программист #1 | Программирование |  | 7 | 50 |
| Программист #2 | Программирование |  | 7 | 50 |
| Программист #3 | Программирование |  | 7 | 50 |
| Программист #4 | Программирование |  | 7 | 50 |
| Системный аналитик | Анализ |  | 20 | 300 |
| Художник-дизайнер | Дизайн |  | 8 | 70 |
| Технический писатель | Документация |  | 5 | 20 |
| Web-дизайнер | Internet |  | 7 | 50 |
| 3D аниматор | Дизайн |  | 8 | 70 |
| Мультимедиа-корреспондент | М-медиа |  | 3 | 20 |
| Наборщик данных #1 | Ввод данных |  | 2 | 10 |
| Наборщик данных #2 | Ввод данных |  | 2 | 10 |
| Наборщик данных #3 | Ввод данных |  | 2 | 10 |
| Наборщик данных #4 | Ввод данных |  | 2 | 10 |
| Наборщик данных #5 | Ввод данных |  | 2 | 10 |
| Аренда сервера |  | hour | 2 |  |
| Расходные материалы |  |  | 600 |  |
| Преподаватель |  |  | 700 |  |

## Schedule

| ID | WBS | Task | Type | Duration | Start | Finish | Predecessors | Complete | Remaining | Baseline start | Baseline finish | Baseline duration | Total slack | Free slack | Constraint | Resources | Work | Actual work | Cost | Baseline cost | Actual cost |
| --- | --- | --- | --- | --- | --- | --- | --- | --- | --- | --- | --- | --- | --- | --- | --- | --- | --- | --- | --- | --- | --- |
| 1 | 1 | Начало проекта | milestone | 0w | 2021-03-01 08:00 | 2021-03-01 08:00 |  |  |  | 2021-03-01 08:00 | 2021-03-01 08:00 | 0w | 40.6d | 0d |  |  |  |  |  |  |  |
| 2 | 2 | **Создание интерфейса** |  | 80.85d | 2021-03-01 08:00 | 2021-06-25 15:47 | 1 |  |  | 2021-03-01 08:00 | 2021-06-24 08:31 | 79.07d | 1.15d | 15.53d |  |  | 560h |  | 6,650 | 5,650 |  |
| 3 | 2.1 | **Разработка дизайна интерфейса** |  | 33.77d | 2021-03-01 08:00 | 2021-04-16 15:08 |  |  |  | 2021-03-01 08:00 | 2021-04-06 14:00 | 25.62d | 40.6d | 0d |  |  | 320h |  | 3,770 | 2,770 |  |
| 4 | 2.1.1 | Разработка 2D графических элементов |  | 3.45w | 2021-03-01 08:00 | 2021-03-26 09:00 |  |  |  | 2021-03-01 08:00 | 2021-03-23 11:00 | 3w | 40.6d | 0d |  | Художник-дизайнер | 120h |  | 1,030 | 1,030 |  |
| 5 | 2.1.2 | Разработка 3D графических элементов |  | 2.3w | 2021-03-01 08:00 | 2021-03-23 10:08 | 4SS |  |  | 2021-03-01 08:00 | 2021-03-16 10:00 | 2w | 40.6d | 0d |  | 3D аниматор | 80h |  | 710 | 710 |  |
| 6 | 2.1.3 | Создание заставки |  | 3.45w | 2021-03-23 10:08 | 2021-04-16 15:08 | 5 |  |  | 2021-03-16 10:00 | 2021-04-06 14:00 | 3w | 40.6d | 41.47d |  | 3D аниматор | 120h |  | 1,030 | 1,030 |  |
| 7 | 2.2 | Программирование интерфейса |  | 1.5w | 2021-06-16 10:47 | 2021-06-25 15:47 | 3, 12 |  |  | 2021-06-11 13:31 | 2021-06-24 08:31 | 1.5w | 1.15d | 0d |  | Программист #4; Программист #3; Программист #1; Программист #2 | 240h |  | 1,880 | 1,880 |  |
| 8 | 3 | **Построение базы объектов** |  | 85.11d | 2021-03-30 09:00 A | 2021-07-30 09:54 |  | 16% | 71.44d | 2021-03-23 11:00 | 2021-07-23 14:00 | 85.25d | 0d |  |  | Аренда сервера [1 /hour] | 5648.91h | 813.98h | 15,487.82 | 15,392 | 2,859.24 |
| 9 | 3.1 | Анализ и построение структуры базы объектов |  | 2w | 2021-03-30 09:00 | 2021-04-13 14:10 |  |  |  | 2021-03-23 11:00 | 2021-04-06 14:00 | 2w | 11.07d | 0d | start no earlier than 2021-03-30 09:00 | Системный аналитик | 80h |  | 1,900 | 1,900 |  |
| 10 | 3.2 | Программирование средств обработки базы объектов |  | 3.52w | 2021-04-07 09:10 A | 2021-05-05 09:54 | 9 | 80% | 0.7w | 2021-04-06 14:00 | 2021-04-27 14:00 | 3w | 0d |  |  | Программист #4; Программист #3; Программист #1; Программист #2 | 240h | 194.26h | 1,880 | 1,780 | 1,459.8 |
| 11 | 3.3 | Наполнение базы объектов |  | 12w | 2021-05-05 09:54 | 2021-07-30 09:54 | 10 |  |  | 2021-04-27 14:00 | 2021-07-23 14:00 | 12w | 0d |  |  | Наборщик данных #1; Наборщик данных #2; Наборщик данных #3; Наборщик данных #4; Наборщик данных #5 | 2400h |  | 4,850 | 4,850 |  |
| 12 | 4 | **Создание ядра GIS** |  | 73.35d | 2021-03-01 08:00 | 2021-06-16 10:47 |  |  |  | 2021-03-01 08:00 | 2021-06-11 13:31 | 71.57d | 1.15d | 0d |  |  | 1880h |  | 18,072.82 | 18,072.82 |  |
| 13 | 4.1 | Анализ и проектирование ядра |  | 3w | 2021-03-01 08:00 | 2021-03-23 11:00 |  |  |  | 2021-03-01 08:00 | 2021-03-23 11:00 | 3w | 1.15d | 0d |  | Ведущий программист; Системный аналитик | 240h |  | 4,000 | 4,000 |  |
| 14 | 4.2 | Создание модели ядра |  | 2.13w | 2021-03-23 11:00 | 2021-04-07 08:02 | 13 |  |  | 2021-03-23 11:00 | 2021-04-06 13:02 | 2.03w | 1.15d | 0d |  | Программист #1; Ведущий программист; Программист #2; Программист #3; Программист #4 | 400h |  | 3,335.97 | 3,335.97 |  |
| 15 | 4.3 | Тестирование модели ядра |  | 1w | 2021-04-07 08:02 | 2021-04-14 13:02 | 14 |  |  | 2021-04-06 13:02 | 2021-04-13 13:02 | 1w | 1.15d | 0d |  | Программист #1 | 40h |  | 330 | 330 |  |
| 16 | 4.4 | Создание рабочей версии ядра |  | 8.37w | 2021-04-14 13:02 | 2021-06-16 10:47 | 15 |  |  | 2021-04-13 13:02 | 2021-06-11 13:31 | 8.21w | 1.15d | 15.53d |  | Программист #1; Ведущий программист; Программист #2; Программист #3; Программист #4 | 1200h |  | 9,406.86 | 9,406.86 |  |
| 17 | 5 | Создание мультимедиа – наполнения |  | 6w | 2021-04-16 15:08 | 2021-06-02 14:08 | 3 |  |  | 2021-04-06 14:00 | 2021-05-21 12:00 | 6w | 40.6d | 41.47d |  | Мультимедиа-корреспондент | 240h |  | 812 | 740 |  |
| 18 | 6 | Создание справочной системы |  | 2w | 2021-07-07 10:47 | 2021-07-21 13:47 | 7 |  |  | 2021-07-06 14:00 | 2021-07-23 10:00 | 2w | 6.64d | 25.79d |  | Технический писатель | 80h |  | 420 | 420 |  |
| 19 | 7 | **Создание руководства пользователя** |  | 17.5d | 2021-06-10 15:47 | 2021-07-07 10:47 | 7FS-10d |  |  | 2021-06-09 09:00 | 2021-07-06 14:00 | 18.5d | 1.15d | 15.53d |  |  | 160h |  | 1,010 | 1,010 |  |
| 20 | 7.1 | Разработка дизайна руководства |  | 1w | 2021-06-10 15:47 | 2021-06-18 16:47 |  |  |  | 2021-06-09 09:00 | 2021-06-17 14:00 | 1w | 1.15d | 0d |  | Художник-дизайнер | 40h |  | 390 | 390 |  |
| 21 | 7.2 | Написание руководства пользователя |  | 3w | 2021-06-15 15:47 | 2021-07-07 10:47 | 20SS+2d |  |  | 2021-06-11 09:00 | 2021-07-06 14:00 | 3w | 1.15d | 0d |  | Технический писатель | 120h |  | 620 | 620 |  |
| 22 | 8 | **Создание web – сайта и поддержка** |  | 23.62d | 2021-06-15 15:47 | 2021-07-19 11:47 |  |  |  | 2021-06-11 09:00 | 2021-07-19 13:02 | 25.38d | 1.15d | 0d |  |  | 248h |  | 2,106 | 2,106 |  |
| 23 | 8.1 | Разработка структуры сайта |  | 1d | 2021-06-15 15:47 | 2021-06-16 16:47 | 21SS |  |  | 2021-06-11 09:00 | 2021-06-15 09:00 | 1d | 1.15d | 0d |  | Web-дизайнер | 8h |  | 106 | 106 |  |
| 24 | 8.2 | Разработка дизайна сайта |  | 1.4w | 2021-06-16 16:47 | 2021-06-28 08:47 | 23 |  |  | 2021-06-15 09:00 | 2021-06-25 09:00 | 1.5w | 1.15d | 0d |  | Web-дизайнер; Художник-дизайнер; 3D аниматор | 120h |  | 1,110 | 1,110 |  |
| 25 | 8.3 | Наполнение сайта |  | 3w | 2021-06-28 08:47 | 2021-07-19 11:47 | 24 |  |  | 2021-06-25 09:00 | 2021-07-19 13:02 | 3w | 1.15d | 15.53d |  | Web-дизайнер | 120h |  | 890 | 890 |  |
| 26 | 9 | Тестирование сайта |  | 2.52w | 2021-07-12 11:47 | 2021-07-29 08:41 | 22FS-1w |  |  | 2021-07-12 13:02 | 2021-07-29 16:56 | 2.7w | 1.15d | 0d |  | Ведущий программист; Программист #1; Программист #2; Программист #3; Программист #4 | 480h |  | 3,944.68 | 3,944.68 |  |
| 27 | 10 | Сдача сайта в эксплуатацию | milestone | 0w | 2021-07-29 08:41 | 2021-07-29 08:41 | 26 |  |  | 2021-07-29 16:56 | 2021-07-29 16:56 | 0w | 1.15d | 15.53d |  |  |  |  |  |  |  |

| ID | WBS | Task | Duration | Start | Finish | Baseline start | Baseline finish | Baseline duration | Total slack | Constraint | Resources | Work | Cost | Baseline cost |
| --- | --- | --- | --- | --- | --- | --- | --- | --- | --- | --- | --- | --- | --- | --- |
| 28 | 11 | **Совещание** | 101.12d | 2021-03-03 08:00 | 2021-07-28 09:00 | 2021-03-03 08:00 | 2021-07-28 09:00 | 101.12d | 2.11d |  |  | 153h | 1,339 | 1,342 |
| 29 | 11.1 | Совещание 1 | 1h | 2021-03-03 08:00 | 2021-03-03 09:00 | 2021-03-03 08:00 | 2021-03-03 09:00 | 1h | 103.11d | start no earlier than 2021-03-03 08:00 | 3D аниматор; Web-дизайнер; Ведущий программист; Мультимедиа-корреспондент; Системный аналитик; Художник-дизайнер; Технический писатель | 7h | 61 | 61 |
| 30 | 11.2 | Совещание 2 | 1h | 2021-03-10 08:00 | 2021-03-10 09:00 | 2021-03-10 08:00 | 2021-03-10 09:00 | 1h | 99.11d | start no earlier than 2021-03-10 08:00 | 3D аниматор; Web-дизайнер; Ведущий программист; Мультимедиа-корреспондент; Системный аналитик; Художник-дизайнер; Технический писатель | 7h | 61 | 61 |
| 31 | 11.3 | Совещание 3 | 1h | 2021-03-17 08:00 | 2021-03-17 09:00 | 2021-03-17 08:00 | 2021-03-17 09:00 | 1h | 94.11d | start no earlier than 2021-03-17 08:00 | 3D аниматор; Web-дизайнер; Ведущий программист; Мультимедиа-корреспондент; Системный аналитик; Художник-дизайнер; Технический писатель | 7h | 61 | 61 |
| 32 | 11.4 | Совещание 4 | 1h | 2021-03-24 08:00 | 2021-03-24 09:00 | 2021-03-24 08:00 | 2021-03-24 09:00 | 1h | 89.11d | start no earlier than 2021-03-24 08:00 | 3D аниматор; Web-дизайнер; Ведущий программист; Мультимедиа-корреспондент; Системный аналитик; Художник-дизайнер; Технический писатель | 7h | 61 | 61 |
| 33 | 11.5 | Совещание 5 | 1h | 2021-03-31 08:00 | 2021-03-31 09:00 | 2021-03-31 08:00 | 2021-03-31 09:00 | 1h | 84.11d | start no earlier than 2021-03-31 08:00 | 3D аниматор; Web-дизайнер; Ведущий программист; Мультимедиа-корреспондент; Системный аналитик; Художник-дизайнер; Технический писатель | 7h | 61 | 61 |
| 34 | 11.6 | Совещание 6 | 1h | 2021-04-07 08:00 | 2021-04-07 09:00 | 2021-04-07 08:00 | 2021-04-07 09:00 | 1h | 79.11d | start no earlier than 2021-04-07 08:00 | 3D аниматор; Web-дизайнер; Ведущий программист; Системный аналитик; Художник-дизайнер; Технический писатель | 6h | 58 | 61 |
| 35 | 11.7 | Совещание 7 | 1h | 2021-04-14 08:00 | 2021-04-14 09:00 | 2021-04-14 08:00 | 2021-04-14 09:00 | 1h | 74.11d | start no earlier than 2021-04-14 08:00 | 3D аниматор; Web-дизайнер; Ведущий программист; Мультимедиа-корреспондент; Системный аналитик; Художник-дизайнер; Технический писатель | 7h | 61 | 61 |
| 36 | 11.8 | Совещание 8 | 1h | 2021-04-21 08:00 | 2021-04-21 09:00 | 2021-04-21 08:00 | 2021-04-21 09:00 | 1h | 69.11d | start no earlier than 2021-04-21 08:00 | 3D аниматор; Web-дизайнер; Ведущий программист; Мультимедиа-корреспондент; Системный аналитик; Художник-дизайнер; Технический писатель | 7h | 61 | 61 |
| 37 | 11.9 | Совещание 9 | 1h | 2021-04-28 08:00 | 2021-04-28 09:00 | 2021-04-28 08:00 | 2021-04-28 09:00 | 1h | 64.11d | start no earlier than 2021-04-28 08:00 | 3D аниматор; Web-дизайнер; Ведущий программист; Мультимедиа-корреспондент; Системный аналитик; Художник-дизайнер; Технический писатель | 7h | 61 | 61 |
| 38 | 11.10 | Совещание 10 | 1h | 2021-05-05 08:00 | 2021-05-05 09:00 | 2021-05-05 08:00 | 2021-05-05 09:00 | 1h | 60.11d | start no earlier than 2021-05-05 08:00 | 3D аниматор; Web-дизайнер; Ведущий программист; Мультимедиа-корреспондент; Системный аналитик; Художник-дизайнер; Технический писатель | 7h | 61 | 61 |
| 39 | 11.11 | Совещание 11 | 1h | 2021-05-12 08:00 | 2021-05-12 09:00 | 2021-05-12 08:00 | 2021-05-12 09:00 | 1h | 56.11d | start no earlier than 2021-05-12 08:00 | 3D аниматор; Web-дизайнер; Ведущий программист; Мультимедиа-корреспондент; Системный аналитик; Художник-дизайнер; Технический писатель | 7h | 61 | 61 |
| 40 | 11.12 | Совещание 12 | 1h | 2021-05-19 08:00 | 2021-05-19 09:00 | 2021-05-19 08:00 | 2021-05-19 09:00 | 1h | 51.11d | start no earlier than 2021-05-19 08:00 | 3D аниматор; Web-дизайнер; Ведущий программист; Мультимедиа-корреспондент; Системный аналитик; Художник-дизайнер; Технический писатель | 7h | 61 | 61 |
| 41 | 11.13 | Совещание 13 | 1h | 2021-05-26 08:00 | 2021-05-26 09:00 | 2021-05-26 08:00 | 2021-05-26 09:00 | 1h | 46.11d | start no earlier than 2021-05-26 08:00 | 3D аниматор; Web-дизайнер; Ведущий программист; Мультимедиа-корреспондент; Системный аналитик; Художник-дизайнер; Технический писатель | 7h | 61 | 61 |
| 42 | 11.14 | Совещание 14 | 1h | 2021-06-02 08:00 | 2021-06-02 09:00 | 2021-06-02 08:00 | 2021-06-02 09:00 | 1h | 41.11d | start no earlier than 2021-06-02 08:00 | 3D аниматор; Web-дизайнер; Ведущий программист; Мультимедиа-корреспондент; Системный аналитик; Художник-дизайнер; Технический писатель | 7h | 61 | 61 |
| 43 | 11.15 | Совещание 15 | 1h | 2021-06-09 08:00 | 2021-06-09 09:00 | 2021-06-09 08:00 | 2021-06-09 09:00 | 1h | 36.11d | start no earlier than 2021-06-09 08:00 | 3D аниматор; Web-дизайнер; Ведущий программист; Мультимедиа-корреспондент; Системный аналитик; Художник-дизайнер; Технический писатель | 7h | 61 | 61 |
| 44 | 11.16 | Совещание 16 | 1h | 2021-06-16 08:00 | 2021-06-16 09:00 | 2021-06-16 08:00 | 2021-06-16 09:00 | 1h | 32.11d | start no earlier than 2021-06-16 08:00 | 3D аниматор; Web-дизайнер; Ведущий программист; Мультимедиа-корреспондент; Системный аналитик; Художник-дизайнер; Технический писатель | 7h | 61 | 61 |
| 45 | 11.17 | Совещание 17 | 1h | 2021-06-23 08:00 | 2021-06-23 09:00 | 2021-06-23 08:00 | 2021-06-23 09:00 | 1h | 27.11d | start no earlier than 2021-06-23 08:00 | 3D аниматор; Web-дизайнер; Ведущий программист; Мультимедиа-корреспондент; Системный аналитик; Художник-дизайнер; Технический писатель | 7h | 61 | 61 |
| 46 | 11.18 | Совещание 18 | 1h | 2021-06-30 08:00 | 2021-06-30 09:00 | 2021-06-30 08:00 | 2021-06-30 09:00 | 1h | 22.11d | start no earlier than 2021-06-30 08:00 | 3D аниматор; Web-дизайнер; Ведущий программист; Мультимедиа-корреспондент; Системный аналитик; Художник-дизайнер; Технический писатель | 7h | 61 | 61 |
| 47 | 11.19 | Совещание 19 | 1h | 2021-07-07 08:00 | 2021-07-07 09:00 | 2021-07-07 08:00 | 2021-07-07 09:00 | 1h | 17.11d | start no earlier than 2021-07-07 08:00 | 3D аниматор; Web-дизайнер; Ведущий программист; Мультимедиа-корреспондент; Системный аналитик; Художник-дизайнер; Технический писатель | 7h | 61 | 61 |
| 48 | 11.20 | Совещание 20 | 1h | 2021-07-14 08:00 | 2021-07-14 09:00 | 2021-07-14 08:00 | 2021-07-14 09:00 | 1h | 12.11d | start no earlier than 2021-07-14 08:00 | 3D аниматор; Web-дизайнер; Ведущий программист; Мультимедиа-корреспондент; Системный аналитик; Художник-дизайнер; Технический писатель | 7h | 61 | 61 |
| 49 | 11.21 | Совещание 21 | 1h | 2021-07-21 08:00 | 2021-07-21 09:00 | 2021-07-21 08:00 | 2021-07-21 09:00 | 1h | 7.11d | start no earlier than 2021-07-21 08:00 | 3D аниматор; Web-дизайнер; Ведущий программист; Мультимедиа-корреспондент; Системный аналитик; Художник-дизайнер; Технический писатель | 7h | 61 | 61 |
| 50 | 11.22 | Совещание 22 | 1h | 2021-07-28 08:00 | 2021-07-28 09:00 | 2021-07-28 08:00 | 2021-07-28 09:00 | 1h | 2.11d | start no earlier than 2021-07-28 08:00 | 3D аниматор; Web-дизайнер; Ведущий программист; Мультимедиа-корреспондент; Системный аналитик; Художник-дизайнер; Технический писатель | 7h | 61 | 61 |
| 51 | 12 | **Повышение квалификации** | 10.5d | 2021-04-05 09:00 | 2021-04-19 14:00 |  |  |  | 70.61d |  |  | 48h | 4,152 |  |
| 52 | 12.1 | Повышение квалификации 1 | 4h | 2021-04-05 09:00 | 2021-04-05 14:00 |  |  |  | 80.61d | start no earlier than 2021-04-05 09:00 | Программист #1; Программист #2; Программист #3; Программист #4; Преподаватель; Расходные материалы | 16h | 1,384 |  |
| 53 | 12.2 | Повышение квалификации 2 | 4h | 2021-04-12 09:00 | 2021-04-12 14:00 |  |  |  | 75.61d | start no earlier than 2021-04-12 09:00 | Преподаватель; Программист #1; Программист #2; Программист #3; Программист #4; Расходные материалы | 16h | 1,384 |  |
| 54 | 12.3 | Повышение квалификации 3 | 4h | 2021-04-19 09:00 | 2021-04-19 14:00 |  |  |  | 70.61d | start no earlier than 2021-04-19 09:00 | Преподаватель; Программист #1; Программист #2; Программист #3; Программист #4; Расходные материалы | 16h | 1,384 |  |
