Schedule from MS Project, 2021-04-05 to 2021-06-25, status date 2021-06-05, costs in ₽, A marks actual dates.

## Calendars

- Стандартный: Mon-Fri 09:00-13:00, 14:00-18:00; Sat-Sun off. Exceptions (off unless hours are given): 2021-05-01 to 2021-05-03 (Праздник Весны и Труда), 2021-05-08 to 2021-05-10 (День победы), 2021-06-12 to 2021-06-14 (День России).

## Resources

| Resource | Group | Unit | Rate | Cost per use | Notes |
| --- | --- | --- | --- | --- | --- |
| Соколов | Программисты |  | 437.5 |  | Ведущий программист |
| Соломин | Программисты |  | 343.75 |  |  |
| Тимофеев | Программисты |  | 312.5 |  |  |
| Яковлева | Программисты |  | 312.5 |  |  |
| Петров | Дизайнеры |  | 468.75 |  | Руководитель дизайнерской группы |
| Кузнецов | Дизайнеры |  | 312.5 |  |  |
| Фомина | Редактор сайта |  | 250 |  |  |
| Преподаватели | Преподаватели |  | 700 |  |  |
| Программное обесечение | ПО |  | 30000 | 5000 |  |
| Картриджи для принтера | Расходные материалы |  | 2500 |  |  |
| Бумага | Расходные материалы | пач. | 200 |  |  |

## Schedule

| ID | WBS | Task | Type | Duration | Start | Finish | Predecessors | Complete | Remaining | Baseline start | Baseline finish | Baseline duration | Total slack | Free slack | Resources | Work | Actual work | Cost | Baseline cost | Actual cost |
| --- | --- | --- | --- | --- | --- | --- | --- | --- | --- | --- | --- | --- | --- | --- | --- | --- | --- | --- | --- | --- |
| 1 | 1 | Начало проекта | milestone | 0d | 2021-04-05 A | 2021-04-05 A |  | 100% |  | 2021-04-05 | 2021-04-05 | 0d |  |  |  |  |  |  |  |  |
| 2 | 2 | Установка ПО |  | 15d | 2021-04-06 A | 2021-04-26 A | 1FS+1d | 100% |  | 2021-04-06 | 2021-04-26 | 15d |  |  | Программное обесечение; Соколов | 120h | 120h | 87,500 | 87,500 | 87,500 |
| 3 | 3 | Обучение персонала |  | 22.14d | 2021-04-20 A | 2021-05-24 A | 2SS+10d | 100% |  | 2021-04-20 | 2021-05-24 | 22.14d |  |  | Бумага [0.02 пач.]; Картриджи для принтера; Кузнецов; Петров; Преподаватели [300%]; Соломин; Тимофеев; Яковлева; Соколов | 960h | 960h | 400,457.15 | 398,671.43 | 400,457.15 |
| 4 | 4 | **Разработка представительских сайтов** |  | 18.91d | 2021-05-24 A | 2021-06-21 | 3 | 79% | 3.97d | 2021-05-24 | 2021-06-18 | 18d | 4.85d | 0d |  | 80h | 63.2h | 27,500 | 26,000 | 21,515 |
| 5 | 4.1 | **Разработка сайта 1** |  | 5d | 2021-05-24 A | 2021-05-31 A |  | 100% |  | 2021-05-24 | 2021-05-31 | 5d |  |  |  | 40h | 40h | 13,750 | 13,000 | 13,750 |
| 6 | 4.1.1 | Разработка дизайна сайта 1 |  | 2d | 2021-05-24 A | 2021-05-26 A |  | 100% |  | 2021-05-24 | 2021-05-26 | 2d |  |  | Кузнецов | 16h | 16h | 5,000 | 5,000 | 5,000 |
| 7 | 4.1.2 | Программирование сайта 1 |  | 3d | 2021-05-26 A | 2021-05-31 A | 6 | 100% |  | 2021-05-26 | 2021-05-31 | 3d |  |  | Тимофеев | 24h | 24h | 8,250 | 7,500 | 8,250 |
| 8 | 4.2 | **Разработка сайта 2** |  | 15.91d | 2021-05-27 A | 2021-06-21 | 5FS-2d | 58% | 6.68d | 2021-05-27 | 2021-06-18 | 15d | 4.85d |  |  | 40h | 23.2h | 13,750 | 13,000 | 7,765 |
| 9 | 4.2.1 | Разработка дизайна сайта 2 |  | 2d | 2021-05-27 A | 2021-05-31 A |  | 100% |  | 2021-05-27 | 2021-05-31 | 2d |  |  | Кузнецов | 16h | 16h | 5,000 | 5,000 | 5,000 |
| 10 | 4.2.2 | Программирование сайта 2 |  | 3d | 2021-05-31 A | 2021-06-21 | 9 | 30% | 2.1d | 2021-06-15 | 2021-06-18 | 3d | 4.85d |  | Тимофеев | 24h | 7.2h | 8,250 | 7,500 | 2,475 |
| 11 | 5 | Представительские сайты созданы | milestone | 0d | 2021-06-21 | 2021-06-21 | 4 |  |  | 2021-06-18 | 2021-06-18 | 0d | 4.85d |  |  |  |  |  |  |  |
| 12 | 6 | **Разработка корпоративного сайта** |  | 23.76d | 2021-05-24 A | 2021-06-25 | 3 | 37% | 15.01d | 2021-05-24 | 2021-06-23 | 21.33d | 0d |  |  | 384h | 135.06h | 132,791.67 | 128,458.33 | 50,582.88 |
| 13 | 6.1 | Проектирование сайта |  | 5.5d | 2021-05-24 A | 2021-05-31 A |  | 100% |  | 2021-05-24 | 2021-05-31 | 5d |  |  | Соколов; Петров | 40h | 40h | 18,125 | 18,125 | 18,125 |
| 14 | 6.2 | Программирование сайта |  | 11d | 2021-05-31 A | 2021-06-16 | 13 | 40% | 6.64d | 2021-05-31 | 2021-06-15 | 10d | 0d |  | Соломин; Яковлева; Тимофеев | 240h | 95.06h | 81,000 | 78,500 | 32,087.88 |
| 15 | 6.3 | Наполнение сайта |  | 3.3d | 2021-06-10 | 2021-06-16 | 14FS-3d |  |  | 2021-06-09 | 2021-06-15 | 3d | 0d |  | Фомина | 24h |  | 6,000 | 6,000 |  |
| 16 | 6.4 | Тестирование сайта |  | 6.96d | 2021-06-16 | 2021-06-25 | 15 |  |  | 2021-06-15 | 2021-06-23 | 6.33d | 0d |  | Соломин; Яковлева; Тимофеев | 80h |  | 26,666.67 | 25,833.33 |  |
| 17 | 7 | Сдача сайта заказчику | milestone | 0d | 2021-06-25 | 2021-06-25 | 16 |  |  | 2021-06-23 | 2021-06-23 | 0d | 0d |  |  |  |  |  |  |  |
