Schedule from MS Project, 2021-04-05 to 2021-06-23, costs in ₽.

## Calendars

- Стандартный: Mon-Fri 09:00-13:00, 14:00-18:00; Sat-Sun off. Exceptions (off unless hours are given): 2021-05-01 to 2021-05-03 (Праздник Весны и Труда), 2021-05-08 to 2021-05-10 (День победы), 2021-06-12 to 2021-06-14 (День России).

## Resources

| Resource | Group | Unit | Rate | Cost per use | Notes |
| --- | --- | --- | --- | --- | --- |
| Соколов | Программисты |  | 437.5 |  | Ведущий программист |
| Соломин | Программисты |  | 343.75 |  |  |
| Тимофеев | Программисты |  | 312.5 |  |  |
| Яковлева | Программисты |  | 312.5 |  |  |
| Петров | Дизайнеры |  | 468.75 |  | Руководитель дизайнерской группы |
| Кузнецов | Дизайнеры |  | 312.5 |  |  |
| Фомина | Редактор сайта |  | 250 |  |  |
| Преподаватели | Преподаватели |  | 700 |  |  |
| Программное обесечение | ПО |  | 30000 | 5000 |  |
| Картриджи для принтера | Расходные материалы |  | 2500 |  |  |
| Бумага | Расходные материалы | пач. | 200 |  |  |

## Schedule

| ID | WBS | Task | Type | Duration | Start | Finish | Predecessors | Baseline start | Baseline finish | Baseline duration | Total slack | Free slack | Resources | Work | Cost | Baseline cost |
| --- | --- | --- | --- | --- | --- | --- | --- | --- | --- | --- | --- | --- | --- | --- | --- | --- |
| 1 | 1 | Начало проекта | milestone | 0d | 2021-04-05 | 2021-04-05 |  | 2021-04-05 | 2021-04-05 | 0d | 0d |  |  |  |  |  |
| 2 | 2 | Установка ПО |  | 15d | 2021-04-06 | 2021-04-26 | 1FS+1d | 2021-04-06 | 2021-04-26 | 15d | 0d |  | Программное обесечение; Соколов | 120h | 87,500 | 87,500 |
| 3 | 3 | Обучение персонала |  | 22.14d | 2021-04-20 | 2021-05-24 | 2SS+10d | 2021-04-20 | 2021-05-24 | 22.14d | 0d |  | Бумага [0.02 пач.]; Картриджи для принтера; Кузнецов; Петров; Преподаватели [300%]; Соломин; Тимофеев; Яковлева; Соколов | 960h | 398,671.43 | 398,671.43 |
| 4 | 4 | **Разработка представительских сайтов** |  | 18d | 2021-05-24 | 2021-06-18 | 3 | 2021-05-24 | 2021-06-18 | 18d | 3.33d | 0d |  | 80h | 26,000 | 26,000 |
| 5 | 4.1 | **Разработка сайта 1** |  | 5d | 2021-05-24 | 2021-05-31 |  | 2021-05-24 | 2021-05-31 | 5d | 3.33d | 0d |  | 40h | 13,000 | 13,000 |
| 6 | 4.1.1 | Разработка дизайна сайта 1 |  | 2d | 2021-05-24 | 2021-05-26 |  | 2021-05-24 | 2021-05-26 | 2d | 3.33d | 0d | Кузнецов | 16h | 5,000 | 5,000 |
| 7 | 4.1.2 | Программирование сайта 1 |  | 3d | 2021-05-26 | 2021-05-31 | 6 | 2021-05-26 | 2021-05-31 | 3d | 3.33d |  | Тимофеев | 24h | 7,500 | 7,500 |
| 8 | 4.2 | **Разработка сайта 2** |  | 15d | 2021-05-27 | 2021-06-18 | 5FS-2d | 2021-05-27 | 2021-06-18 | 15d | 3.33d |  |  | 40h | 13,000 | 13,000 |
| 9 | 4.2.1 | Разработка дизайна сайта 2 |  | 2d | 2021-05-27 | 2021-05-31 |  | 2021-05-27 | 2021-05-31 | 2d | 3.33d | 0d | Кузнецов | 16h | 5,000 | 5,000 |
| 10 | 4.2.2 | Программирование сайта 2 |  | 3d | 2021-06-15 | 2021-06-18 | 9 | 2021-06-15 | 2021-06-18 | 3d | 3.33d |  | Тимофеев | 24h | 7,500 | 7,500 |
| 11 | 5 | Представительские сайты созданы | milestone | 0d | 2021-06-18 | 2021-06-18 | 4 | 2021-06-18 | 2021-06-18 | 0d | 3.33d |  |  |  |  |  |
| 12 | 6 | **Разработка корпоративного сайта** |  | 21.33d | 2021-05-24 | 2021-06-23 | 3 | 2021-05-24 | 2021-06-23 | 21.33d | 0d |  |  | 384h | 128,458.33 | 128,458.33 |
| 13 | 6.1 | Проектирование сайта |  | 5d | 2021-05-24 | 2021-05-31 |  | 2021-05-24 | 2021-05-31 | 5d | 0d |  | Соколов; Петров | 40h | 18,125 | 18,125 |
| 14 | 6.2 | Программирование сайта |  | 10d | 2021-05-31 | 2021-06-15 | 13 | 2021-05-31 | 2021-06-15 | 10d | 0d |  | Соломин; Яковлева; Тимофеев | 240h | 78,500 | 78,500 |
| 15 | 6.3 | Наполнение сайта |  | 3d | 2021-06-09 | 2021-06-15 | 14FS-3d | 2021-06-09 | 2021-06-15 | 3d | 0d |  | Фомина | 24h | 6,000 | 6,000 |
| 16 | 6.4 | Тестирование сайта |  | 6.33d | 2021-06-15 | 2021-06-23 | 15 | 2021-06-15 | 2021-06-23 | 6.33d | 0d |  | Соломин; Яковлева; Тимофеев | 80h | 25,833.33 | 25,833.33 |
| 17 | 7 | Сдача сайта заказчику | milestone | 0d | 2021-06-23 | 2021-06-23 | 16 | 2021-06-23 | 2021-06-23 | 0d | 0d |  |  |  |  |  |
